# BBQRMS Project Plan 2011

Schedule from MS Project, 2011-01-03 to 2011-04-18, A marks actual dates.
LDS Church

## Calendars

- Standard: Mon-Fri 08:00-12:00, 13:00-17:00; Sat-Sun off.

## Resources

| Resource |
| --- |
| Jerod |
| Mike |
| Scott |
| Jessie |
| Bob |

## Schedule

| ID | WBS | Task | Type | Duration | Start | Finish | Predecessors | Complete | Baseline start | Baseline finish | Baseline duration | Constraint | Resources | Work | Actual work |
| --- | --- | --- | --- | --- | --- | --- | --- | --- | --- | --- | --- | --- | --- | --- | --- |
| 1 | 1 | **Iteration 1 (1/3-1/19)** |  | 13d | 2011-01-03 A | 2011-01-19 A |  | 100% | 2011-01-03 | 2011-01-19 | 13d |  |  | 408h | 408h |
| 2 | 1.1 | Revise Project Plan |  | 6d | 2011-01-03 A | 2011-01-10 A |  | 100% | 2011-01-03 | 2011-01-10 | 6d |  | Jerod; Scott; Mike; Jessie | 192h | 192h |
| 3 | 1.2 | Revise SSRS |  | 2d | 2011-01-11 A | 2011-01-12 A | 2 | 100% | 2011-01-11 | 2011-01-12 | 2d |  | Jerod; Scott; Mike; Jessie | 64h | 64h |
| 4 | 1.3 | Revised SSRS Due | milestone | 0d | 2011-01-19 A | 2011-01-19 A | 2, 3 | 100% | 2011-01-19 | 2011-01-19 | 0d | must finish on 2011-01-19 |  |  |  |
| 5 | 1.4 | BBQRMS-47 Build Initial Database structure |  | 5d | 2011-01-13 A | 2011-01-19 A |  | 100% | 2011-01-13 | 2011-01-19 | 5d |  | Jerod | 40h | 40h |
| 6 | 1.5 | BBQRMS-42 Shell - Main application navigation |  | 2d | 2011-01-13 A | 2011-01-14 A |  | 100% | 2011-01-13 | 2011-01-14 | 2d |  | Mike | 16h | 16h |
| 7 | 1.6 | BBQRMS-44 Shell - Setup database server and communication |  | 1d | 2011-01-17 A | 2011-01-17 A |  | 100% | 2011-01-17 | 2011-01-17 | 1d |  | Mike | 8h | 8h |
| 8 | 1.7 | BBQRMS-22 Security - Users can log in |  | 0.5d | 2011-01-18 A | 2011-01-18 A | 6, 7 | 100% | 2011-01-18 | 2011-01-18 | 0.5d |  | Mike | 4h | 4h |
| 9 | 1.8 | BBQRMS-23 Security - Users can log out |  | 0.5d | 2011-01-18 A | 2011-01-18 A | 8 | 100% | 2011-01-18 | 2011-01-18 | 0.5d |  | Mike | 4h | 4h |
| 10 | 1.9 | BBQRMS-18 Inventory Management - Receive an inventory order |  | 5d | 2011-01-13 A | 2011-01-19 A |  | 100% | 2011-01-13 | 2011-01-19 | 5d |  | Jessie | 40h | 40h |
| 11 | 1.10 | BBQRMS-45 Order Entry - Design User Interface for Placing Customer Orders |  | 5d | 2011-01-13 A | 2011-01-19 A |  | 100% | 2011-01-13 | 2011-01-19 | 5d |  | Scott | 40h | 40h |
| 12 | 1.11 | Graded Checkpoint 1 | milestone | 0d | 2011-01-19 A | 2011-01-19 A |  | 100% | 2011-01-19 | 2011-01-19 | 0d | must finish on 2011-01-19 |  |  |  |
| 13 | 2 | **Iteration 2 (1/20-1/31)** |  | 8d | 2011-01-20 A | 2011-01-31 A |  | 100% | 2011-01-20 | 2011-01-31 | 8d | start no earlier than 2011-01-20 |  | 224h | 224h |
| 14 | 2.1 | BBQRMS-24 Security - Program features are limited by assigned user roles |  | 2d | 2011-01-28 A | 2011-01-31 A |  | 100% | 2011-01-28 | 2011-01-31 | 2d |  | Mike | 16h | 16h |
| 15 | 2.2 | BBQRMS-43 Reports - Integrated reporting tool |  | 6d | 2011-01-20 A | 2011-01-27 A |  | 100% | 2011-01-20 | 2011-01-27 | 6d |  | Mike | 48h | 48h |
| 16 | 2.3 | BBQRMS-33 Order Entry - Place and save customer order without taking payment |  | 4d | 2011-01-20 A | 2011-01-25 A | 11 | 100% | 2011-01-20 | 2011-01-25 | 4d |  | Scott | 32h | 32h |
| 17 | 2.4 | BBQRMS-17 Inventory Management - Add Supplier |  | 4d | 2011-01-20 A | 2011-01-25 A |  | 100% | 2011-01-20 | 2011-01-25 | 4d |  | Jessie | 32h | 32h |
| 18 | 2.5 | BBQRMS-57 Inventory Management - Place an Inventory Order |  | 4d | 2011-01-26 A | 2011-01-31 A | 17 | 100% | 2011-01-26 | 2011-01-31 | 4d |  | Jessie | 32h | 32h |
| 19 | 2.6 | BBQRMS-39 admin - Add/Modify Employees |  | 3d | 2011-01-20 A | 2011-01-24 A |  | 100% | 2011-01-20 | 2011-01-24 | 3d |  | Jerod | 24h | 24h |
| 20 | 2.7 | BBQRMS-40 admin - Add/Modify Roles and Privs |  | 5d | 2011-01-25 A | 2011-01-31 A | 19 | 100% | 2011-01-25 | 2011-01-31 | 5d |  | Jerod | 40h | 40h |
| 21 | 2.8 | Graded Progress Check 2 | milestone | 0d | 2011-01-31 A | 2011-01-31 A |  | 100% | 2011-01-31 | 2011-01-31 | 0d | must finish on 2011-01-31 |  |  |  |
| 22 | 3 | **Iteration 3 (2/1-2/14)** |  | 10d | 2011-02-01 A | 2011-02-14 A |  | 100% | 2011-02-01 | 2011-02-14 | 10d | start no earlier than 2011-02-01 |  | 280h | 280h |
| 23 | 3.1 | BBQRMS-36 Cashiering - Accept payment for saved customer order |  | 5d | 2011-02-01 A | 2011-02-07 A | 11 | 100% | 2011-02-01 | 2011-02-07 | 5d |  | Scott | 40h | 40h |
| 24 | 3.2 | BBQRMS-35 Order Entry - Take a customer order and accept payment |  | 5d | 2011-02-08 A | 2011-02-14 A | 23 | 100% | 2011-02-08 | 2011-02-14 | 5d |  | Scott | 40h | 40h |
| 25 | 3.3 | BBQRMS-19 Inventory Management - Reconcile Inventory |  | 10d | 2011-02-01 A | 2011-02-14 A | 10 | 100% | 2011-02-01 | 2011-02-14 | 10d |  | Jessie | 80h | 80h |
| 26 | 3.4 | BBQRMS-30 Security - Users can clock in and clock out |  | 4d | 2011-02-01 A | 2011-02-04 A | 8, 9 | 100% | 2011-02-01 | 2011-02-04 | 4d |  | Mike | 32h | 32h |
| 27 | 3.5 | BBQRMS-25 Security - Users can change their PIN |  | 2d | 2011-02-07 A | 2011-02-08 A | 26 | 100% | 2011-02-07 | 2011-02-08 | 2d |  | Mike | 16h | 16h |
| 28 | 3.6 | BBQRMS-56 Menu Management - Create/Edit/Delete Menu |  | 4d | 2011-02-01 A | 2011-02-04 A |  | 100% | 2011-02-01 | 2011-02-04 | 4d |  | Jerod | 32h | 32h |
| 29 | 3.7 | BBQRMS-31 Menu Management - Create/Edit/Delete Menu Item |  | 5d | 2011-02-07 A | 2011-02-11 A | 28 | 100% | 2011-02-07 | 2011-02-11 | 5d |  | Jerod | 40h | 40h |

| ID | WBS | Task | Type | Duration | Start | Finish | Predecessors | Complete | Remaining | Baseline start | Baseline finish | Baseline duration | Total slack | Free slack | Constraint | Resources | Work | Actual work |
| --- | --- | --- | --- | --- | --- | --- | --- | --- | --- | --- | --- | --- | --- | --- | --- | --- | --- | --- |
| 30 | 4 | **Iteration 4 (2/15-2/28)** |  | 10d | 2011-02-15 A | 2011-02-28 A |  | 100% |  | 2011-02-15 | 2011-03-01 | 11d? |  |  | start no earlier than 2011-02-15 |  | 272h | 272h |
| 31 | 4.1 | BBQRMS-32 Cook Screen - Complete a Customer Order |  | 5d | 2011-02-15 A | 2011-02-21 A |  | 100% |  | 2011-02-15 | 2011-02-21 | 5d |  |  |  | Scott; Jerod | 80h | 80h |
| 32 | 4.2 | BBQRMS-38 Cashiering - Take multiple methods of payment for a customer order |  | 5d | 2011-02-21 A | 2011-02-25 A |  | 100% |  | 2011-03-01 | 2011-03-07 | 5d |  |  |  | Scott | 40h | 40h |
| 33 | 4.3 | BBQRMS-5 Update UI for user management to be touch friendly |  | 3d | 2011-02-24 A | 2011-02-28 A |  | 100% |  | 2011-03-01 | 2011-03-04 | 4d |  |  |  | Jerod | 24h | 24h |
| 34 | 4.4 | Test Plan |  | 1d | 2011-02-16 A | 2011-02-16 A |  | 100% |  | 2011-02-16 | 2011-02-16 | 1d |  |  | as late as possible | Jerod; Jessie; Mike | 24h | 24h |
| 35 | 4.5 | System testing |  | 5d | 2011-02-21 A | 2011-02-25 A | 34 | 100% |  | 2011-02-17 | 2011-02-23 | 5d |  |  | as late as possible | Jerod; Jessie | 80h | 80h |
| 36 | 4.6 | Testing Results |  | 3d | 2011-02-23 A | 2011-02-25 A |  | 100% |  | 2011-02-23 | 2011-02-23 | 0d |  |  | must finish on 2011-03-05 | Jerod | 24h | 24h |
| 37 | 5 | **Iteration 5 (3/1-3/14)** |  | 16d | 2011-03-01 A | 2011-03-22 |  | 97% | 0.51d | 2011-03-01 | 2011-03-14 | 10d | 17.5d |  | start no earlier than 2011-03-01 |  | 368h | 358h |
| 38 | 5.1 | BBQRMS-28 Reports - Daily Sales Report |  | 2d | 2011-03-01 A | 2011-03-02 A | 15 | 100% |  | 2011-02-09 | 2011-02-10 | 2d |  |  |  | Mike | 16h | 16h |
| 39 | 5.2 | BBQRMS-52 Cashiering - Open Cash drawer |  | 1d | 2011-03-09 A | 2011-03-09 A |  | 100% |  | 2011-03-01 | 2011-03-07 | 5d |  |  | finish no earlier than 2011-03-11 | Mike | 8h | 8h |
| 40 | 5.3 | BBQRMS-48 Cashiering - Print Receipt |  | 4d | 2011-03-09 A | 2011-03-14 A |  | 100% |  | 2011-02-15 | 2011-02-21 | 5d |  |  | finish no earlier than 2011-03-14 | Mike | 32h | 32h |
| 41 | 5.4 | BBQRMS-53 Cashiering - Process Credit Card |  | 10d | 2011-03-01 A | 2011-03-14 A | 32 | 100% |  | 2011-03-08 | 2011-03-14 | 5d |  |  |  | Scott | 80h | 80h |
| 42 | 5.5 | BBQRMS-16 Inventory Management - Touch-screen |  | 5d | 2011-03-07 A | 2011-03-11 | 25 | 75% | 1.25d | 2011-02-15 | 2011-02-15 | 1d? | 24.5d | 5d | start no earlier than 2011-03-07 | Jerod | 40h | 30h |
| 43 | 5.6 | Bug Fixing |  | 7d | 2011-03-14 A | 2011-03-22 A |  | 100% |  | 2011-03-24 | 2011-04-01 | 7d |  |  | start no earlier than 2011-03-14 | Scott; Mike | 112h | 112h |
| 44 | 5.7 | System testing |  | 10d | 2011-03-01 A | 2011-03-14 A |  | 100% |  | 2011-03-01 | 2011-03-14 | 10d |  |  |  | Jessie | 80h | 80h |
| 45 | 6 | **Iteration 6 (3/15-4/4)** |  | 16d | 2011-03-14 A | 2011-04-04 |  | 54% | 7.31d | 2011-03-15 | 2011-04-04 | 15d | 10d |  |  |  | 368h | 168h |
| 46 | 6.1 | BBQRMS-37 Order Entry - Recall and modify saved customer order |  | 4d | 2011-03-14 A | 2011-03-17 A | 11 | 100% |  | 2011-01-26 | 2011-01-31 | 4d |  |  |  | Scott | 32h | 32h |
| 47 | 6.2 | BBQRMS-2 Reports - Daily Shopping List |  | 3d | 2011-03-21 A | 2011-03-23 | 15, 42 | 50% | 1.5d | 2011-02-22 | 2011-02-24 | 3d | 18d |  |  | Mike | 24h | 12h |
| 48 | 6.3 | Beta testing |  | 5d | 2011-03-14 A | 2011-03-18 A |  | 100% |  | 2011-03-15 | 2011-03-23 | 7d |  |  | start no earlier than 2011-03-14 | Jessie | 40h | 40h |
| 49 | 6.4 | Beta Test Results | milestone | 0d | 2011-03-23 | 2011-03-23 |  |  |  | 2011-03-23 | 2011-03-23 | 0d | 0d |  | must finish on 2011-03-23 | Jerod |  |  |
| 50 | 6.5 | Graded Checkpoint 3 | milestone | 0d | 2011-03-21 | 2011-03-21 |  |  |  | 2011-02-28 | 2011-02-28 | 0d | 21d |  | start no earlier than 2011-03-21 | Jerod |  |  |
| 51 | 6.6 | Bug Fixing |  | 7d | 2011-03-14 A | 2011-03-22 |  | 75% | 1.75d | 2011-03-24 | 2011-04-01 | 7d | 19d |  | start no earlier than 2011-03-14 | Scott; Mike | 112h | 84h |
| 52 | 6.7 | System Testing |  | 10d | 2011-03-21 | 2011-04-01 |  |  |  | 2011-03-24 | 2011-04-01 | 7d | 11d |  | start no earlier than 2011-03-21 | Jerod; Jessie | 160h |  |
| 53 | 6.8 | Graded Checkpoint 4 | milestone | 0d | 2011-04-04 | 2011-04-04 |  |  |  | 2011-04-04 | 2011-04-04 | 0d | 0d |  | must finish on 2011-04-04 | Jerod |  |  |

| ID | WBS | Task | Type | Duration | Start | Finish | Baseline start | Baseline finish | Baseline duration | Total slack | Constraint | Resources | Work |
| --- | --- | --- | --- | --- | --- | --- | --- | --- | --- | --- | --- | --- | --- |
| 54 | 7 | **Iteration 7 (4/5-4/18)** |  | 11d | 2011-04-04 | 2011-04-18 | 2011-04-05 | 2011-04-18 | 10d | 0d |  |  | 320h |
| 55 | 7.1 | Burn in |  | 10d | 2011-04-04 | 2011-04-15 | 2011-04-05 | 2011-04-18 | 10d | 1d | start no earlier than 2011-04-04 | Jerod; Scott; Mike; Jessie | 320h |
| 62 | 7.2 | Final Delivery to Instructor | milestone | 0d | 2011-04-13 | 2011-04-13 | 2011-04-13 | 2011-04-13 | 0d | 0d | must finish on 2011-04-13 |  |  |
| 63 | 7.3 | Project Go Live | milestone | 0d | 2011-04-18 | 2011-04-18 | 2011-04-18 | 2011-04-18 | 0d | 0d | must finish on 2011-04-18 |  |  |
